# HL7_SDK_plan_3_23

Schedule from MS Project, 2007-01-16 to 2007-07-30, A marks actual dates.
NCI

## Calendars

- Standard: Mon-Fri 08:00-12:00, 13:00-17:00; Sat-Sun off.

## Resources

| Resource |
| --- |
| Scott |
| Ye |
| Mike |
| Nick |
| ENG1 |
| ENG3 |
| Charles |
| Ki-Sung |
| Harsha |
| Eugene |
| Wendy |
| Smita |
| QA |
| 20 |

## Schedule

| ID | WBS | Task | Type | Duration | Start | Finish | Predecessors | Complete | Remaining | Baseline start | Baseline finish | Baseline duration | Total slack | Free slack | Constraint | Resources | Work | Actual work |
| --- | --- | --- | --- | --- | --- | --- | --- | --- | --- | --- | --- | --- | --- | --- | --- | --- | --- | --- |
| 1 | 1 | **Perform Project Management Activities** |  | 23d | 2007-01-16 | 2007-02-15 |  |  |  | 2006-06-12 | 2006-06-19 | 6d? | 1d |  |  |  | 217.6h |  |
| 2 | 1.1 | Draft Scope Document |  | 10d | 2007-01-16 | 2007-01-29 |  |  |  | 2006-06-12 | 2006-06-13 | 2d | 1d | 0d | start no earlier than 2007-01-16 | Ye | 80h |  |
| 3 | 2.1.3.3 | Deliverable: Scope Document | milestone | 1d | 2007-01-30 | 2007-01-30 | 2 |  |  | 2006-06-14 | 2006-06-14 | 1d | 123d | 0d | start no earlier than 2005-06-14 | Ye | 8h |  |
| 4 | 1.3 | Draft Initial Project Plan |  | 5d | 2007-01-31 | 2007-02-06 | 3 |  |  | 2003-09-08 | 2005-12-13 | 593d? | 123d | 0d |  | Ye | 40h |  |
| 5 | 2.1.3.3 | Deliverable: Project Plan |  | 1d | 2007-02-07 | 2007-02-07 | 4 |  |  | 2006-06-16 | 2006-06-16 | 1d | 123d |  |  | Ye [80%] | 6.4h |  |
| 6 | 1.5 | Review Scope Document |  | 1d | 2007-01-30 | 2007-01-30 | 2 |  |  | 2006-06-15 | 2006-06-15 | 1d | 117d | 0d |  | Ye [80%] | 6.4h |  |
| 7 | 1.6 | Draft System Requirment Document |  | 10d | 2007-01-31 | 2007-02-13 | 6 |  |  | 2006-06-19 | 2006-06-19 | 1d? | 117d | 0d |  | Ye [80%] | 64h |  |
| 8 | 1.7 | Deliverable: System Requirment Document |  | 1d | 2007-02-14 | 2007-02-14 | 7 |  |  | 2006-06-16 | 2006-06-16 | 1d? | 117d | 0d |  | Ye [80%] | 6.4h |  |
| 9 | 1.8 | Revise and submit project plan to Gforge |  | 1d | 2007-02-15 | 2007-02-15 | 8 |  |  | 2006-06-19 | 2006-06-19 | 1d? | 117d |  |  | Ye [80%] | 6.4h |  |
| 10 | 2 | **caBIG Annual Meeting** |  | 17d | 2007-01-16 A | 2007-02-07 A |  | 100% |  |  |  |  |  |  |  |  |  |  |
| 11 | 2.1 | Poster |  | 2d | 2007-01-16 A | 2007-01-17 A |  | 100% |  |  |  |  |  |  | start no earlier than 2007-01-16 |  |  |  |
| 12 | 2.2 | Tech Demo |  | 2d | 2007-01-18 A | 2007-01-19 A | 11 | 100% |  |  |  |  |  |  | start no earlier than 2007-01-16 |  |  |  |
| 13 | 2.3 | Hack-a-Thon |  | 2d | 2007-01-22 A | 2007-01-23 A | 12 | 100% |  |  |  |  |  |  | start no earlier than 2007-01-16 |  |  |  |
| 14 | 2.4 | caBIG annual meeting |  | 3d | 2007-02-05 A | 2007-02-07 A | 13 | 100% |  |  |  |  |  |  | start no earlier than 2007-01-16 |  |  |  |
| 15 | 3 | **caAdapter Training (please refer to the training project plan)** |  | 71d? | 2007-01-22 | 2007-04-30 |  |  |  |  |  |  | 65d |  |  |  | 1224h |  |
| 16 | 3.1 | Model Mapping Service |  | 8d? | 2007-01-22 | 2007-01-31 |  |  |  |  |  |  | 85d | 0d | finish no earlier than 2007-01-31 | Wendy; Smita; Charles | 192h |  |
| 17 | 3.2 | caAdapter cvs to HL7 V3 transformation service training II |  | 20d? | 2007-02-01 | 2007-02-28 | 16 |  |  |  |  |  | 85d | 0d | finish no earlier than 2007-02-28 | Wendy; Smita; Charles | 480h |  |
| 18 | 3.3 | caAdapter HL7 v2 to HL7 v3 transformation service training |  | 22d? | 2007-03-01 | 2007-03-30 | 17 |  |  |  |  |  | 85d | 20d | finish no earlier than 2007-03-30 | Wendy; Smita; Charles | 528h |  |
| 19 | 3.4 | caAdapter cvs toSDTM transformation service training |  | 1d? | 2007-04-30 | 2007-04-30 | 18 |  |  |  |  |  | 65d |  | finish no earlier than 2007-04-30 | Wendy; Smita; Charles | 24h |  |
| 20 | 4 | **caAdapter V3.3 tasks** |  | 53d | 2007-02-08 A | 2007-04-23 |  | 54% | 24.4d |  |  |  | 29d | 0d |  | Nick; Eugene | 1168h | 663.27h |
| 21 | 4.1 | **Inception** |  | 19d | 2007-02-08 A | 2007-03-06 A |  | 100% |  | 2006-06-19 | 2006-07-03 | 11d |  |  |  |  | 64h | 64h |
| 22 | 4.1.1 | Requirement gathering and analysis |  | 10d | 2007-02-08 A | 2007-02-21 A |  | 100% |  | 2006-06-19 | 2006-06-30 | 10d |  |  | start no earlier than 2007-02-08 |  |  |  |
| 23 | 4.1.2 | Draft use cases for model mapping service enhancement (Task 4) |  | 8d | 2007-02-22 A | 2007-03-05 A | 22 | 100% |  | 2006-06-19 | 2006-06-30 | 10d |  |  | start no earlier than 2007-02-22 | Nick | 64h | 64h |
| 24 | 2.1.3.3 | Deliverable: Use Cases | milestone | 1d | 2007-03-06 A | 2007-03-06 A | 23 | 100% |  | 2006-07-03 | 2006-07-03 | 1d |  |  | finish no earlier than 2006-07-04 |  |  |  |

| ID | WBS | Task | Type | Duration | Start | Finish | Predecessors | Complete | Remaining | Baseline start | Baseline finish | Baseline duration | Total slack | Free slack | Constraint | Resources | Work | Actual work |
| --- | --- | --- | --- | --- | --- | --- | --- | --- | --- | --- | --- | --- | --- | --- | --- | --- | --- | --- |
| 25 | 4.2 | **Elaboration** |  | 17d | 2007-03-07 A | 2007-03-29 |  | 15% | 14.5d | 2006-07-04 | 2006-07-19 | 12d | 46d |  |  |  | 128h | 20h |
| 26 | 4.2.1 | Draft design document for model mapping service enhancement (Task 4) |  | 5d | 2007-03-07 A | 2007-03-13 | 21 | 50% | 2.5d | 2006-06-19 | 2006-06-30 | 10d | 44.2d | 0d | start no earlier than 2007-02-27 | Nick | 40h | 20h |
| 27 | 4.2.2 | Deliverable: Design Doc |  | 1d | 2007-03-14 | 2007-03-14 | 26 |  |  | 2006-07-19 | 2006-07-19 | 1d | 44.2d | 0d |  |  |  |  |
| 28 | 4.2.3 | Draft Test Plan and Test Cases |  | 10d | 2007-03-15 | 2007-03-28 | 27 |  |  | 2006-07-04 | 2006-07-17 | 10d | 46d | 0d |  | QA | 80h |  |
| 29 | 4.2.4 | Deliverable: System Test Plan |  | 1d | 2007-03-29 | 2007-03-29 | 28 |  |  | 2006-07-18 | 2006-07-18 | 0.3d | 46d |  |  | QA | 8h |  |
| 30 | 4.3 | **model mapping service enhancement (Task 4) development** |  | 16d | 2007-03-15 A | 2007-04-05 |  | 95% | 0.8d | 2006-06-19 | 2006-06-30 | 10d | 29d | 0d |  | Nick | 128h | 121.6h |
| 31 | 4.3.1 | Retrieval of tag values from .xmi files (task 4(d)) |  | 10d | 2007-03-15 A | 2007-03-28 | 27 | 95% | 0.5d |  |  |  | 34.7d | 0d |  |  |  |  |
| 32 | 4.3.2 | UI enhancement for MMS (task 4(d)) |  | 3d | 2007-03-29 A | 2007-04-02 | 31 | 95% | 0.15d |  |  |  | 31.85d | 0d |  |  |  |  |
| 33 | 4.3.3 | System integration testing (task 4(d)) |  | 3d | 2007-04-03 A | 2007-04-05 | 32 | 95% | 0.15d |  |  |  | 29d |  |  |  |  |  |
| 34 | 4.4 | **Transition** |  | 6d | 2007-04-06 | 2007-04-13 |  |  |  |  |  |  | 29d |  |  |  |  |  |
| 35 | 4.4.1 | QA System testing - Model Mapping Service |  | 3d | 2007-04-06 | 2007-04-10 | 30 |  |  |  |  |  | 29d | 0d |  |  |  |  |
| 36 | 4.4.2 | Staging System testing |  | 3d | 2007-04-11 | 2007-04-13 | 35 |  |  |  |  |  | 29d | 0d |  |  |  |  |
| 37 | 4.5 | **Documentation** |  | 6d | 2007-04-16 | 2007-04-23 |  |  |  |  |  |  | 29d |  |  |  |  |  |
| 38 | 2.1.5.4.1 | Update Requirements |  | 0.3d | 2007-04-16 | 2007-04-16 | 36 |  |  | 2006-12-06 | 2006-12-12 | 5d | 29d | 0d |  |  |  |  |
| 39 | 2.1.3.3 | Deliverable: Requirements | milestone | 0.2d | 2007-04-16 | 2007-04-16 | 38 |  |  | 2006-12-13 | 2006-12-13 | 1d | 29d | 0d | start no earlier than 2005-04-08 |  |  |  |
| 40 | 2.1.5.4.3 | Update Users Guide |  | 1d | 2007-04-16 | 2007-04-17 | 39 |  |  | 2005-07-25 | 2005-08-05 | 10d? | 29d | 0d |  |  |  |  |
| 41 | 2.1.3.3 | Deliverable: Users Guide | milestone | 0.5d | 2007-04-17 | 2007-04-17 | 40 |  |  | 2006-12-15 | 2006-12-15 | 1d | 29d | 0d | start no earlier than 2005-04-08 |  |  |  |
| 42 | 2.1.5.4.2 | Update Design Document |  | 0.3d | 2007-04-18 | 2007-04-18 | 41 |  |  | 2006-12-06 | 2006-12-12 | 5d | 29d | 0d |  |  |  |  |
| 43 | 2.1.3.3 | Deliverable: Design Document | milestone | 0.2d | 2007-04-18 | 2007-04-18 | 42 |  |  | 2006-12-13 | 2006-12-13 | 1d | 29d | 0d | start no earlier than 2005-04-08 |  |  |  |
| 44 | 2.1.5.4.4 | Update Installation Guide |  | 0.3d | 2007-04-18 | 2007-04-18 | 43 |  |  | 2006-12-06 | 2006-12-14 | 7d | 29d | 0d |  |  |  |  |
| 45 | 2.1.3.3 | Deliverable: Installation Guide | milestone | 0.2d | 2007-04-18 | 2007-04-18 | 44 |  |  | 2006-12-15 | 2006-12-15 | 1d | 29d | 0d | start no earlier than 2005-04-08 |  |  |  |
| 46 | 2.1.5.4.5 | Update Readme |  | 1d | 2007-04-19 | 2007-04-19 | 45 |  |  | 2006-12-06 | 2006-12-06 | 1d | 31d |  | start no earlier than 2005-12-19 |  |  |  |
| 47 | 2.1.5.4.6 | Update Release Note |  | 1d | 2007-04-19 | 2007-04-19 | 45 |  |  | 2006-12-06 | 2006-12-07 | 2d | 31d |  | start no earlier than 2005-12-19 |  |  |  |
| 48 | 2.1.5.4.6 | Update Press Release |  | 1d | 2007-04-19 | 2007-04-19 | 45 |  |  | 2006-12-06 | 2006-12-07 | 2d | 31d |  | start no earlier than 2005-12-19 |  |  |  |
| 49 | 2.1.5.4.8 | Update the Website content |  | 1d | 2007-04-19 | 2007-04-19 | 45 |  |  | 2006-12-06 | 2006-12-12 | 5d | 31d |  |  |  |  |  |
| 50 | 4.5.13 | Update Mapping Tool Help System Text |  | 1d | 2007-04-19 | 2007-04-19 | 45 |  |  | 2006-12-06 | 2006-12-08 | 3d | 29d | 0d |  |  |  |  |
| 51 | 4.5.14 | Prepare final download package |  | 1d | 2007-04-20 | 2007-04-20 | 50 |  |  | 2006-12-19 | 2006-12-20 | 2d | 29d | 0d |  |  |  |  |
| 52 | 2.1.6 | Deliverable: Packaged Iteration | milestone | 1d | 2007-04-23 | 2007-04-23 | 51 |  |  | 2006-12-18 | 2006-12-18 | 1d | 29d |  |  |  |  |  |

| ID | WBS | Task | Type | Duration | Start | Finish | Predecessors | Baseline start | Baseline finish | Baseline duration | Total slack | Free slack | Constraint | Resources | Work |
| --- | --- | --- | --- | --- | --- | --- | --- | --- | --- | --- | --- | --- | --- | --- | --- |
| 53 | 5 | **caAdapter V3.4 tasks** |  | 41d | 2007-04-24 | 2007-06-19 |  |  |  |  | 29d |  |  | Nick; Eugene | 928h |
| 54 | 5.1 | **Inception** |  | 7d | 2007-04-24 | 2007-05-02 |  | 2006-06-19 | 2006-07-03 | 11d | 29d | 0d |  |  | 24h |
| 55 | 5.1.1 | Requirement gathering and analysis |  | 3d | 2007-04-24 | 2007-04-26 | 20 | 2006-06-19 | 2006-06-30 | 10d | 29d | 0d | start no earlier than 2007-02-08 |  |  |
| 56 | 5.1.2 | Draft use cases for model mapping service enhancement (Task 4) |  | 3d | 2007-04-27 | 2007-05-01 | 55 | 2006-06-19 | 2006-06-30 | 10d | 29d | 0d | start no earlier than 2007-02-22 | Nick | 24h |
| 57 | 2.1.3.3 | Deliverable: Use Cases | milestone | 1d | 2007-05-02 | 2007-05-02 | 56 | 2006-07-03 | 2006-07-03 | 1d | 29d |  | finish no earlier than 2006-07-04 |  |  |
| 58 | 5.2 | **Elaboration** |  | 17d | 2007-05-03 | 2007-05-25 |  | 2006-07-04 | 2006-07-19 | 12d | 29d |  |  |  | 128h |
| 59 | 5.2.1 | Draft design document for model mapping service enhancement (Task 4) |  | 5d | 2007-05-03 | 2007-05-09 | 54 | 2006-06-19 | 2006-06-30 | 10d | 29d | 0d | start no earlier than 2007-02-27 | Nick | 40h |
| 60 | 5.2.2 | Deliverable: Design Doc |  | 1d | 2007-05-10 | 2007-05-10 | 59 | 2006-07-19 | 2006-07-19 | 1d | 29d | 0d |  |  |  |
| 61 | 5.2.3 | Draft Test Plan and Test Cases |  | 10d | 2007-05-11 | 2007-05-24 | 60 | 2006-07-04 | 2006-07-17 | 10d | 46d | 0d |  | QA | 80h |
| 62 | 5.2.4 | Deliverable: System Test Plan |  | 1d | 2007-05-25 | 2007-05-25 | 61 | 2006-07-18 | 2006-07-18 | 0.3d | 46d |  |  | QA | 8h |
| 63 | 5.3 | **model mapping service enhancement (Task 4) development** |  | 15d | 2007-05-11 | 2007-05-31 |  | 2006-06-19 | 2006-06-30 | 10d | 29d | 0d |  | Nick | 120h |
| 64 | 5.3.1 | XML meta loader (task 4(f)) |  | 3d | 2007-05-11 | 2007-05-15 | 60 |  |  |  | 29d | 0d |  |  |  |
| 65 | 5.3.2 | Object to Object mapping (task 4(f)) |  | 10d | 2007-05-16 | 2007-05-29 | 64 |  |  |  | 29d | 0d |  |  |  |
| 66 | 5.3.3 | System integration testing (task 4(d)) |  | 2d | 2007-05-30 | 2007-05-31 | 65 |  |  |  | 29d |  |  |  |  |
| 67 | 5.4 | **Transition** |  | 5d | 2007-06-01 | 2007-06-07 |  |  |  |  | 29d |  |  |  |  |
| 68 | 5.4.1 | QA System testing - Model Mapping Service |  | 3d | 2007-06-01 | 2007-06-05 | 63 |  |  |  | 29d | 0d |  |  |  |
| 69 | 5.4.2 | Staging System testing |  | 2d | 2007-06-06 | 2007-06-07 | 68 |  |  |  | 29d | 0d |  |  |  |
| 70 | 5.5 | **Documentation** |  | 8d | 2007-06-08 | 2007-06-19 |  |  |  |  | 29d |  |  |  |  |
| 71 | 2.1.5.4.1 | Update Requirements |  | 0.3d | 2007-06-08 | 2007-06-08 | 69 | 2006-12-06 | 2006-12-12 | 5d | 29d | 0d |  |  |  |
| 72 | 2.1.3.3 | Deliverable: Requirements | milestone | 0.2d | 2007-06-08 | 2007-06-08 | 71 | 2006-12-13 | 2006-12-13 | 1d | 29d | 0d | start no earlier than 2005-04-08 |  |  |
| 73 | 2.1.5.4.3 | Update Users Guide |  | 3d | 2007-06-08 | 2007-06-13 | 72 | 2005-07-25 | 2005-08-05 | 10d? | 29d | 0d |  |  |  |
| 74 | 2.1.3.3 | Deliverable: Users Guide | milestone | 0.5d | 2007-06-13 | 2007-06-13 | 73 | 2006-12-15 | 2006-12-15 | 1d | 29d | 0d | start no earlier than 2005-04-08 |  |  |
| 75 | 2.1.5.4.2 | Update Design Document |  | 0.3d | 2007-06-14 | 2007-06-14 | 74 | 2006-12-06 | 2006-12-12 | 5d | 29d | 0d |  |  |  |
| 76 | 2.1.3.3 | Deliverable: Design Document | milestone | 0.2d | 2007-06-14 | 2007-06-14 | 75 | 2006-12-13 | 2006-12-13 | 1d | 29d | 0d | start no earlier than 2005-04-08 |  |  |
| 77 | 2.1.5.4.4 | Update Installation Guide |  | 0.3d | 2007-06-14 | 2007-06-14 | 76 | 2006-12-06 | 2006-12-14 | 7d | 29d | 0d |  |  |  |
| 78 | 2.1.3.3 | Deliverable: Installation Guide | milestone | 0.2d | 2007-06-14 | 2007-06-14 | 77 | 2006-12-15 | 2006-12-15 | 1d | 29d | 0d | start no earlier than 2005-04-08 |  |  |
| 79 | 2.1.5.4.5 | Update Readme |  | 1d | 2007-06-15 | 2007-06-15 | 78 | 2006-12-06 | 2006-12-06 | 1d | 31d |  | start no earlier than 2005-12-19 |  |  |
| 80 | 2.1.5.4.6 | Update Release Note |  | 1d | 2007-06-15 | 2007-06-15 | 78 | 2006-12-06 | 2006-12-07 | 2d | 31d |  | start no earlier than 2005-12-19 |  |  |
| 81 | 2.1.5.4.6 | Update Press Release |  | 1d | 2007-06-15 | 2007-06-15 | 78 | 2006-12-06 | 2006-12-07 | 2d | 31d |  | start no earlier than 2005-12-19 |  |  |
| 82 | 2.1.5.4.8 | Update the Website content |  | 1d | 2007-06-15 | 2007-06-15 | 78 | 2006-12-06 | 2006-12-12 | 5d | 31d |  |  |  |  |
| 83 | 5.5.13 | Update Mapping Tool Help System Text |  | 1d | 2007-06-15 | 2007-06-15 | 78 | 2006-12-06 | 2006-12-08 | 3d | 29d | 0d |  |  |  |
| 84 | 5.5.14 | Prepare final download package |  | 1d | 2007-06-18 | 2007-06-18 | 83 | 2006-12-19 | 2006-12-20 | 2d | 29d | 0d |  |  |  |
| 85 | 2.1.6 | Deliverable: Packaged Iteration | milestone | 1d | 2007-06-19 | 2007-06-19 | 84 | 2006-12-18 | 2006-12-18 | 1d | 29d |  |  |  |  |

| ID | WBS | Task | Type | Duration | Start | Finish | Predecessors | Complete | Remaining | Baseline start | Baseline finish | Baseline duration | Total slack | Free slack | Constraint | Resources | Work | Actual work |
| --- | --- | --- | --- | --- | --- | --- | --- | --- | --- | --- | --- | --- | --- | --- | --- | --- | --- | --- |
| 86 | 6 | **caAdapter V4.0 tasks** |  | 140d | 2007-01-16 A | 2007-07-30 |  | 17% | 116.52d | 2005-02-02 | 2005-08-09 | 136d? | 0d |  |  |  | 5520h | 1324.4h |
| 87 | 6.1 | **Iteration 1 - caAdapter mapping tool set** |  | 140d | 2007-01-16 A | 2007-07-30 |  | 17% | 116.52d | 2006-06-19 | 2006-12-22 | 135d | 0d |  |  |  | 5520h | 1324.4h |
| 88 | 6.1.1 | **caAdapter code base enhancement (Task 8)** |  | 25d | 2007-01-16 A | 2007-02-19 |  | 99% | 0.25d |  |  |  | 115d |  |  |  | 200h | 198h |
| 89 | 6.1.1.1 | caAdapter code base enhancement analysis |  | 5d | 2007-01-16 A | 2007-01-22 A |  | 100% |  |  |  |  |  |  | start no earlier than 2007-01-16 | Eugene | 40h | 40h |
| 90 | 6.1.1.2 | caAdapter code base enhancement design |  | 5d | 2007-01-23 A | 2007-01-29 A | 89 | 100% |  |  |  |  |  |  | start no earlier than 2007-01-16 | Eugene | 40h | 40h |
| 91 | 6.1.1.3 | caAdapter code base enhancement review |  | 5d | 2007-01-30 A | 2007-02-05 A | 90 | 100% |  |  |  |  |  |  | start no earlier than 2007-01-16 | Eugene | 40h | 40h |
| 92 | 6.1.1.4 | **caAdapter code base enhancement implementation** |  | 10d | 2007-02-06 A | 2007-02-19 |  | 98% | 0.25d |  |  |  | 115d |  |  |  | 80h | 78h |
| 93 | 6.1.1.4.1 | caAdapter code base enhancement UI implementation |  | 5d | 2007-02-06 A | 2007-02-12 A | 91 | 100% |  |  |  |  |  |  | start no earlier than 2007-01-16 | Eugene | 40h | 40h |
| 94 | 6.1.1.4.2 | caAdapter code base enhancement - service layer implementation |  | 5d | 2007-02-13 A | 2007-02-19 | 93 | 95% | 0.25d |  |  |  | 115d |  | start no earlier than 2007-01-16 | Eugene | 40h | 38h |
| 95 | 6.1.2 | **Inception** |  | 19d | 2007-02-08 A | 2007-03-06 |  | 57% | 8.11d | 2006-06-19 | 2006-07-03 | 11d | 104d |  |  |  | 576h | 358.4h |
| 96 | 6.1.2.1 | Requirement gathering and analysis |  | 10d | 2007-02-08 | 2007-02-21 | 14 |  |  | 2006-06-19 | 2006-06-30 | 10d | 0d |  | start no earlier than 2007-02-08 |  |  |  |
| 97 | 6.1.2.2 | Draft use cases for csv/database to SDTM transformation service enhancement (Task 1) |  | 8d | 2007-02-22 A | 2007-03-05 A | 96 | 100% |  | 2006-06-19 | 2006-06-30 | 10d |  |  | start no earlier than 2007-02-22 | Harsha | 64h | 64h |
| 98 | 6.1.2.3 | Draft use cases for csv to HL7 v3 transformation service enhancement (Task 2) |  | 8d | 2007-02-22 A | 2007-03-05 A | 96 | 100% |  | 2006-06-19 | 2006-06-30 | 10d |  |  | start no earlier than 2007-02-22 | Ye | 64h | 64h |
| 99 | 6.1.2.4 | Draft use cases for HL7 v2 to HL7 v3 transformation service enhancement (Task 3) |  | 8d | 2007-02-22 A | 2007-03-05 | 96 | 80% | 1.6d | 2006-06-19 | 2006-06-30 | 10d | 105d |  | start no earlier than 2007-02-22 | Ki-Sung; Ye | 128h | 102.4h |
| 100 | 6.1.2.5 | Draft use cases for model mapping service enhancement (Task 4) |  | 8d | 2007-02-22 A | 2007-03-05 A | 96 | 100% |  | 2006-06-19 | 2006-06-30 | 10d |  |  | start no earlier than 2007-02-22 | Nick | 64h | 64h |
| 101 | 6.1.2.6 | Draft use cases for vocabulary mapping service (Task 6) |  | 8d | 2007-02-22 A | 2007-03-05 A | 96 | 100% |  | 2006-06-19 | 2006-06-30 | 10d |  |  | start no earlier than 2007-02-22 | Ki-Sung | 64h | 64h |
| 102 | 6.1.2.7 | Draft use cases caAdapter Web Services (Task 7) |  | 8d | 2007-02-22 | 2007-03-05 | 96 |  |  | 2006-06-19 | 2006-06-30 | 10d | 105d |  | start no earlier than 2007-02-22 | Ye; Harsha | 128h |  |
| 103 | 6.1.2.8 | Draft use cases forHL7 v3 to csv transformation service enhancement (Task 9) |  | 8d | 2007-02-22 | 2007-03-05 | 96 |  |  | 2006-06-19 | 2006-06-30 | 10d | 0d |  | start no earlier than 2007-02-22 | Eugene | 64h |  |
| 104 | 2.1.3.3 | Deliverable: Use Cases | milestone | 1d | 2007-03-06 | 2007-03-06 | 103 |  |  | 2006-07-03 | 2006-07-03 | 1d | 0d |  | finish no earlier than 2006-07-04 |  |  |  |
| 105 | 6.1.3 | **Elaboration** |  | 13d | 2007-03-07 A | 2007-03-23 | 104 | 44% | 7.26d | 2006-07-04 | 2006-07-19 | 12d | 0d |  |  |  | 1024h | 416h |
| 106 | 6.1.3.1 | Draft design document for csv/database to SDTM transformation service enhancement (Task 1) |  | 13d | 2007-03-07 A | 2007-03-23 A |  | 100% |  | 2006-06-19 | 2006-06-30 | 10d |  |  | start no earlier than 2007-02-27 | Harsha | 104h | 104h |
| 107 | 6.1.3.2 | Draft design document for csv to HL7 v3 transformation service enhancement (Task 2) |  | 13d | 2007-03-07 A | 2007-03-23 A |  | 100% |  | 2006-06-19 | 2006-06-30 | 10d |  |  | start no earlier than 2007-02-27 | Ye | 104h | 104h |
| 108 | 6.1.3.3 | Draft design document for HL7 v2 to HL7 v3 transformation service enhancement (Task 3) |  | 13d | 2007-03-07 A | 2007-03-23 |  | 50% | 6.5d | 2006-06-19 | 2006-06-30 | 10d | 0d |  | start no earlier than 2007-02-27 | Ki-Sung; Ye | 208h | 104h |
| 109 | 6.1.3.4 | Draft design document for model mapping service enhancement (Task 4) |  | 13d | 2007-03-07 A | 2007-03-23 |  | 50% | 6.5d | 2006-06-19 | 2006-06-30 | 10d | 0d |  | start no earlier than 2007-02-27 | Nick | 104h | 52h |
| 110 | 6.1.3.5 | Draft design document for vocabulary mapping service (Task 6) |  | 13d | 2007-03-07 A | 2007-03-23 |  | 50% | 6.5d | 2006-06-19 | 2006-06-30 | 10d | 0d |  | start no earlier than 2007-02-27 | Ki-Sung | 104h | 52h |
| 111 | 6.1.3.6 | Draft design document caAdapter Web Services (Task 7) |  | 13d | 2007-03-07 | 2007-03-23 |  |  |  | 2006-06-19 | 2006-06-30 | 10d | 0d |  | start no earlier than 2007-02-27 | Ye; Harsha | 208h |  |
| 112 | 6.1.3.7 | Draft design document forHL7 v3 to csv transformation service enhancement (Task 9) |  | 13d | 2007-03-07 | 2007-03-23 |  |  |  | 2006-06-19 | 2006-06-30 | 10d | 0d |  | start no earlier than 2007-02-27 | Eugene | 104h |  |
| 113 | 6.1.3.8 | Deliverable: Design Doc |  | 1d | 2007-03-07 | 2007-03-07 |  |  |  | 2006-07-19 | 2006-07-19 | 1d | 12d |  |  |  |  |  |
| 114 | 6.1.3.9 | Draft Test Plan and Test Cases |  | 10d | 2007-03-07 | 2007-03-20 | 104 |  |  | 2006-07-04 | 2006-07-17 | 10d | 2d | 0d |  | QA | 80h |  |
| 115 | 6.1.3.10 | Deliverable: System Test Plan | milestone | 1d | 2007-03-21 | 2007-03-21 | 114 |  |  | 2006-07-18 | 2006-07-18 | 0.3d | 2d |  |  | QA | 8h |  |

| ID | WBS | Task | Duration | Start | Finish | Predecessors | Complete | Remaining | Baseline start | Baseline finish | Baseline duration | Total slack | Constraint | Resources | Work | Actual work |
| --- | --- | --- | --- | --- | --- | --- | --- | --- | --- | --- | --- | --- | --- | --- | --- | --- |
| 116 | 6.1.4 | **Construction** | 50d | 2007-03-26 A | 2007-06-01 | 105 | 17% | 41.54d | 2006-07-20 | 2006-09-20 | 45d | 0d |  |  | 2640h | 352h |
| 117 | 6.1.4.1 | **csv/database to SDTM transformation service enhancement (Task 1) development** | 50d | 2007-03-26 A | 2007-06-01 |  | 20% | 40d | 2006-06-19 | 2006-06-30 | 10d | 0d |  | Harsha | 400h | 80h |
| 118 | 6.1.4.1.1 | Database/CTOM object model to SDTM mapping (task 1(a)) | 20d | 2007-03-26 A | 2007-04-20 |  | 50% | 10d |  |  |  | 0d |  |  |  |  |
| 119 | 6.1.4.1.2 | SDTM API (task 1( c )) | 15d | 2007-04-23 | 2007-05-11 | 118 |  |  |  |  |  | 0d |  |  |  |  |
| 120 | 6.1.4.1.3 | SDTM web services (task 1(d)) | 15d | 2007-05-14 | 2007-06-01 | 119 |  |  |  |  |  | 0d |  |  |  |  |
| 121 | 6.1.4.2 | **csv to HL7 v3 transformation service enhancement (Task 2) development** | 50d | 2007-03-26 A | 2007-06-01 |  | 40% | 30d | 2006-06-19 | 2006-06-30 | 10d | 0d |  | Ye | 400h | 160h |
| 122 | 6.1.4.2.1 | HL7 v3 Datatype parser (task 2(a)) | 10d | 2007-03-26 A | 2007-04-06 A |  | 100% |  |  |  |  |  |  |  |  |  |
| 123 | 6.1.4.2.2 | HL7 v3 Mif parser (task 2(a)) | 10d | 2007-04-09 A | 2007-04-20 A | 122 | 100% |  |  |  |  |  |  |  |  |  |
| 124 | 6.1.4.2.3 | csv to HL7 v3 transformation service enhancement (task 2(a)) | 20d | 2007-04-23 | 2007-05-18 | 123 |  |  |  |  |  | 0d |  |  |  |  |
| 125 | 6.1.4.2.4 | csv to HL7 v3 UI enhancement | 10d | 2007-05-21 | 2007-06-01 | 124 |  |  |  |  |  | 0d |  |  |  |  |
| 126 | 6.1.4.3 | HL7 v2 to HL7 v3 transformation service enhancement (Task 3) development | 50d | 2007-03-26 | 2007-06-01 |  |  |  | 2006-06-19 | 2006-06-30 | 10d | 0d | start no earlier than 2007-02-27 | Ki-Sung; Ye | 800h |  |
| 127 | 6.1.4.4 | **model mapping service enhancement (Task 4) development** | 20d | 2007-03-26 A | 2007-04-20 |  | 50% | 10d | 2006-06-19 | 2006-06-30 | 10d | 30d |  | Nick | 160h | 80h |
| 128 | 6.1.4.4.1 | Direct database retrieval (task 4 -c) | 10d | 2007-03-26 A | 2007-04-06 A |  | 100% |  |  |  |  |  |  |  |  |  |
| 129 | 6.1.4.4.2 | Enhanced integration with caCORE SDK (task 4(e)) | 10d | 2007-04-09 | 2007-04-20 | 128 |  |  |  |  |  | 30d |  |  |  |  |
| 130 | 6.1.4.5 | vocabulary mapping service (Task 6) development | 20d | 2007-03-26 A | 2007-04-20 |  | 20% | 16d | 2006-06-19 | 2006-06-30 | 10d | 30d | start no earlier than 2007-02-27 | Ki-Sung | 160h | 32h |
| 131 | 6.1.4.6 | caAdapter Web Services (Task 7) development | 20d | 2007-03-26 | 2007-04-20 |  |  |  | 2006-06-19 | 2006-06-30 | 10d | 30d | start no earlier than 2007-02-27 | Ye; Harsha | 320h |  |
| 132 | 6.1.4.7 | **HL7 v3 to csv transformation service enhancement (Task 9) development** | 40d | 2007-03-26 | 2007-05-18 |  |  |  | 2006-06-19 | 2006-06-30 | 10d | 0d |  | Eugene | 320h |  |
| 133 | 6.1.4.7.1 | HL7 v3 message parser | 10d | 2007-03-26 | 2007-04-06 |  |  |  |  |  |  | 0d |  |  |  |  |
| 134 | 6.1.4.7.2 | HL7 v3 message to csv transformer | 20d | 2007-04-09 | 2007-05-04 | 133 |  |  |  |  |  | 0d |  |  |  |  |
| 135 | 6.1.4.7.3 | HL7 v3 to csv tranformation report | 10d | 2007-05-07 | 2007-05-18 | 134 |  |  |  |  |  | 0d |  |  |  |  |
| 136 | 6.1.4.8 | caAdapter product packaging | 10d | 2007-05-21 | 2007-06-01 | 135 |  |  |  |  |  | 0d |  | Eugene | 80h |  |
| 137 | 2.1.5 | **Transition** | 39d | 2007-06-04 | 2007-07-26 | 116 |  |  | 2005-07-11 | 2005-08-09 | 22d? | 0d |  |  | 1080h |  |
| 138 | 2.1.5.1 | **Deploy To QA Server - Integration Testing, Test, and Resolve Defects** | 11d | 2007-06-04 | 2007-06-18 | 116 |  |  | 2005-07-11 | 2005-07-22 | 10d | 0d |  |  | 360h |  |
| 139 | 6.1.5.1.1 | Deploy to QA server for integration testing | 1d | 2007-06-04 | 2007-06-04 | 116 |  |  | 2006-09-21 | 2006-09-22 | 2d | 0d |  |  |  |  |
| 140 | 6.1.5.1.2 | Execute csv/database to SDTM transformation service enhancement (Task 1) test cases | 5d | 2007-06-05 | 2007-06-11 | 139 |  |  | 2006-06-19 | 2006-06-30 | 10d | 5d | start no earlier than 2007-02-27 | Harsha | 40h |  |
| 141 | 6.1.5.1.3 | Execute csv to HL7 v3 transformation service enhancement (Task 2) test cases | 5d | 2007-06-05 | 2007-06-11 | 139 |  |  | 2006-06-19 | 2006-06-30 | 10d | 5d | start no earlier than 2007-02-27 | Ye | 40h |  |
| 142 | 6.1.5.1.4 | Execute HL7 v2 to HL7 v3 transformation service enhancement (Task 3) test cases | 5d | 2007-06-05 | 2007-06-11 | 139 |  |  | 2006-06-19 | 2006-06-30 | 10d | 5d | start no earlier than 2007-02-27 | Ki-Sung; Ye | 80h |  |
| 143 | 6.1.5.1.5 | Execute model mapping service enhancement (Task 4) test cases | 5d | 2007-06-05 | 2007-06-11 | 139 |  |  | 2006-06-19 | 2006-06-30 | 10d | 5d | start no earlier than 2007-02-27 | Nick | 40h |  |
| 144 | 6.1.5.1.6 | Execute vocabulary mapping service (Task 6) test cases | 5d | 2007-06-05 | 2007-06-11 | 139 |  |  | 2006-06-19 | 2006-06-30 | 10d | 5d | start no earlier than 2007-02-27 | Ki-Sung | 40h |  |
| 145 | 6.1.5.1.7 | Execute caAdapter Web Services (Task 7) test cases | 5d | 2007-06-05 | 2007-06-11 | 139 |  |  | 2006-06-19 | 2006-06-30 | 10d | 5d | start no earlier than 2007-02-27 | Ye; Harsha | 80h |  |
| 146 | 6.1.5.1.8 | Execute HL7 v3 to csv transformation service enhancement (Task 9) test cases | 5d | 2007-06-05 | 2007-06-11 | 139 |  |  | 2006-06-19 | 2006-06-30 | 10d | 0d | start no earlier than 2007-02-27 | Eugene | 40h |  |
| 147 | 6.1.5.1.9 | Execute all test cases | 5d | 2007-06-12 | 2007-06-18 | 146 |  |  | 2006-10-23 | 2006-10-31 | 7d | 0d |  |  |  |  |

| ID | WBS | Task | Type | Duration | Start | Finish | Predecessors | Baseline start | Baseline finish | Baseline duration | Total slack | Free slack | Constraint | Resources | Work |
| --- | --- | --- | --- | --- | --- | --- | --- | --- | --- | --- | --- | --- | --- | --- | --- |
| 148 | 2.1.5.1 | **Deploy To QA Server- System testing, Test, and Resolve Defects** |  | 11d | 2007-06-19 | 2007-07-03 |  | 2005-07-11 | 2005-07-22 | 10d | 0d |  |  |  | 360h |
| 149 | 6.1.5.2.1 | Deploy to QA server for System testing |  | 1d | 2007-06-19 | 2007-06-19 | 138 | 2006-09-21 | 2006-09-22 | 2d | 0d |  |  |  |  |
| 150 | 6.1.5.2.2 | Execute csv/database to SDTM transformation service enhancement (Task 1) test cases |  | 5d | 2007-06-20 | 2007-06-26 | 149 | 2006-06-19 | 2006-06-30 | 10d | 5d |  | start no earlier than 2007-02-27 | Harsha | 40h |
| 151 | 6.1.5.2.3 | Execute csv to HL7 v3 transformation service enhancement (Task 2) test cases |  | 5d | 2007-06-20 | 2007-06-26 | 149 | 2006-06-19 | 2006-06-30 | 10d | 5d |  | start no earlier than 2007-02-27 | Ye | 40h |
| 152 | 6.1.5.2.4 | Execute HL7 v2 to HL7 v3 transformation service enhancement (Task 3) test cases |  | 5d | 2007-06-20 | 2007-06-26 | 149 | 2006-06-19 | 2006-06-30 | 10d | 5d |  | start no earlier than 2007-02-27 | Ki-Sung; Ye | 80h |
| 153 | 6.1.5.2.5 | Execute model mapping service enhancement (Task 4) test cases |  | 5d | 2007-06-20 | 2007-06-26 | 149 | 2006-06-19 | 2006-06-30 | 10d | 5d |  | start no earlier than 2007-02-27 | Nick | 40h |
| 154 | 6.1.5.2.6 | Execute vocabulary mapping service (Task 6) test cases |  | 5d | 2007-06-20 | 2007-06-26 | 149 | 2006-06-19 | 2006-06-30 | 10d | 5d |  | start no earlier than 2007-02-27 | Ki-Sung | 40h |
| 155 | 6.1.5.2.7 | Execute caAdapter Web Services (Task 7) test cases |  | 5d | 2007-06-20 | 2007-06-26 | 149 | 2006-06-19 | 2006-06-30 | 10d | 5d |  | start no earlier than 2007-02-27 | Ye; Harsha | 80h |
| 156 | 6.1.5.2.8 | Execute HL7 v3 to csv transformation service enhancement (Task 9) test cases |  | 5d | 2007-06-20 | 2007-06-26 | 149 | 2006-06-19 | 2006-06-30 | 10d | 0d |  | start no earlier than 2007-02-27 | Eugene | 40h |
| 157 | 6.1.5.2.9 | Execute all test cases |  | 5d | 2007-06-27 | 2007-07-03 | 156 | 2006-10-23 | 2006-10-31 | 7d | 0d |  |  |  |  |
| 158 | 2.1.5.2 | **Deploy to Staging Server, Test, and Resolve Defects** |  | 11d | 2007-07-04 | 2007-07-18 |  | 2006-11-01 | 2006-11-21 | 15d | 1d | 0d |  |  | 360h |
| 159 | 6.1.5.3.1 | Deploy to Staging server |  | 1d | 2007-07-04 | 2007-07-04 | 148 | 2006-11-01 | 2006-11-02 | 2d | 1d | 0d |  |  |  |
| 160 | 6.1.5.3.2 | Execute csv/database to SDTM transformation service enhancement (Task 1) test cases |  | 5d | 2007-07-05 | 2007-07-11 | 159 | 2006-06-19 | 2006-06-30 | 10d | 7d |  | start no earlier than 2007-02-27 | Harsha | 40h |
| 161 | 6.1.5.3.3 | Execute csv to HL7 v3 transformation service enhancement (Task 2) test cases |  | 5d | 2007-07-05 | 2007-07-11 | 159 | 2006-06-19 | 2006-06-30 | 10d | 7d |  | start no earlier than 2007-02-27 | Ye | 40h |
| 162 | 6.1.5.3.4 | Execute HL7 v2 to HL7 v3 transformation service enhancement (Task 3) test cases |  | 5d | 2007-07-05 | 2007-07-11 | 159 | 2006-06-19 | 2006-06-30 | 10d | 7d |  | start no earlier than 2007-02-27 | Ki-Sung; Ye | 80h |
| 163 | 6.1.5.3.5 | Execute model mapping service enhancement (Task 4) test cases |  | 5d | 2007-07-05 | 2007-07-11 | 159 | 2006-06-19 | 2006-06-30 | 10d | 7d |  | start no earlier than 2007-02-27 | Nick | 40h |
| 164 | 6.1.5.3.6 | Execute vocabulary mapping service (Task 6) test cases |  | 5d | 2007-07-05 | 2007-07-11 | 159 | 2006-06-19 | 2006-06-30 | 10d | 7d |  | start no earlier than 2007-02-27 | Ki-Sung | 40h |
| 165 | 6.1.5.3.7 | Execute caAdapter Web Services (Task 7) test cases |  | 5d | 2007-07-05 | 2007-07-11 | 159 | 2006-06-19 | 2006-06-30 | 10d | 7d |  | start no earlier than 2007-02-27 | Ye; Harsha | 80h |
| 166 | 6.1.5.3.8 | Execute HL7 v3 to csv transformation service enhancement (Task 9) test cases |  | 5d | 2007-07-05 | 2007-07-11 | 159 | 2006-06-19 | 2006-06-30 | 10d | 2d | 0d | start no earlier than 2007-02-27 | Eugene | 40h |
| 167 | 6.1.5.3.9 | Execute all test cases |  | 5d | 2007-07-12 | 2007-07-18 | 166 | 2006-10-23 | 2006-10-31 | 7d | 2d |  |  |  |  |
| 168 | 2.1.5.3 | Perform Reggression, Performance Testing, and Resolve Defects |  | 5d | 2007-07-19 | 2007-07-25 | 158 | 2006-11-22 | 2006-12-05 | 2w | 2d | 0d |  |  |  |
| 169 | 2.1.3.3 | Deliverable: Test Results | milestone | 1d | 2007-07-26 | 2007-07-26 | 168 | 2006-12-06 | 2006-12-06 | 1d | 2d |  | start no earlier than 2005-04-08 |  |  |
| 170 | 6.1.6 | **Documentation** |  | 17d | 2007-07-04 | 2007-07-26 |  | 2006-07-18 | 2006-12-22 | 113.7d | 0d |  |  |  |  |
| 171 | 2.1.5.4.1 | Update Requirements |  | 10d | 2007-07-04 | 2007-07-17 | 148 | 2006-12-06 | 2006-12-12 | 5d | 4d | 0d |  |  |  |
| 172 | 2.1.3.3 | Deliverable: Requirements | milestone | 1d | 2007-07-18 | 2007-07-18 | 171 | 2006-12-13 | 2006-12-13 | 1d | 4d |  | start no earlier than 2005-04-08 |  |  |
| 173 | 2.1.5.4.3 | Update Users Guide |  | 10d | 2007-07-04 | 2007-07-17 | 148 | 2005-07-25 | 2005-08-05 | 10d? | 4d | 0d |  |  |  |
| 174 | 2.1.3.3 | Deliverable: Users Guide | milestone | 1d | 2007-07-18 | 2007-07-18 | 173 | 2006-12-15 | 2006-12-15 | 1d | 4d | 0d | start no earlier than 2005-04-08 |  |  |
| 175 | 2.1.5.4.2 | Update Design Document |  | 10d | 2007-07-04 | 2007-07-17 | 148 | 2006-12-06 | 2006-12-12 | 5d | 4d | 0d |  |  |  |
| 176 | 2.1.3.3 | Deliverable: Design Document | milestone | 1d | 2007-07-18 | 2007-07-18 | 175 | 2006-12-13 | 2006-12-13 | 1d | 4d |  | start no earlier than 2005-04-08 |  |  |
| 177 | 2.1.5.4.4 | Update Installation Guide |  | 10d | 2007-07-04 | 2007-07-17 | 148 | 2006-12-06 | 2006-12-14 | 7d | 0d |  |  |  |  |
| 178 | 2.1.3.3 | Deliverable: Installation Guide | milestone | 1d | 2007-07-18 | 2007-07-18 | 177 | 2006-12-15 | 2006-12-15 | 1d | 0d |  | start no earlier than 2005-04-08 |  |  |
| 179 | 2.1.5.4.5 | Update Readme |  | 1d | 2007-07-19 | 2007-07-19 | 174 | 2006-12-06 | 2006-12-06 | 1d | 7d |  | start no earlier than 2005-12-19 |  |  |
| 180 | 2.1.5.4.6 | Update Release Note |  | 1d | 2007-07-19 | 2007-07-19 | 178 | 2006-12-06 | 2006-12-07 | 2d | 0d |  | start no earlier than 2005-12-19 |  |  |
| 181 | 2.1.5.4.6 | Update Press Release |  | 1d | 2007-07-20 | 2007-07-20 | 180 | 2006-12-06 | 2006-12-07 | 2d | 0d |  | start no earlier than 2005-12-19 |  |  |
| 182 | 2.1.5.4.8 | Update the Website content |  | 1d | 2007-07-23 | 2007-07-23 | 181 | 2006-12-06 | 2006-12-12 | 5d | 0d |  |  |  |  |
| 183 | 6.1.6.13 | Update Mapping Tool Help System Text |  | 1d | 2007-07-24 | 2007-07-24 | 182 | 2006-12-06 | 2006-12-08 | 3d | 0d |  |  |  |  |
| 184 | 6.1.6.14 | Prepare final download package |  | 1d | 2007-07-25 | 2007-07-25 | 172, 174, 176, 178, 183 | 2006-12-19 | 2006-12-20 | 2d | 0d |  |  |  |  |
| 185 | 2.1.6 | Deliverable: Packaged Iteration | milestone | 1d | 2007-07-26 | 2007-07-26 | 184 | 2006-12-18 | 2006-12-18 | 1d | 0d |  |  |  |  |

| ID | WBS | Task | Type | Duration | Start | Finish | Predecessors | Baseline start | Baseline finish | Baseline duration | Total slack | Constraint |
| --- | --- | --- | --- | --- | --- | --- | --- | --- | --- | --- | --- | --- |
| 186 | 2.1.7 | **Support User Acceptance Test** |  | 15d | 2007-07-05 | 2007-07-25 |  | 2006-11-22 | 2006-12-05 | 10d | 1d |  |
| 187 | 6.1.7.1 | UAT Testing |  | 15d | 2007-07-05 | 2007-07-25 | 159 | 2006-11-22 | 2006-12-05 | 2w | 1d |  |
| 188 | 6.1.8 | Project Manager Activities |  | 129d | 2007-01-30 | 2007-07-27 | 2 | 2006-12-19 | 2006-12-20 | 2d | 1d | finish no earlier than 2006-12-21 |
| 189 | 6.1.9 | Product support |  | 129d | 2007-01-30 | 2007-07-27 | 2 | 2006-12-19 | 2006-12-20 | 2d | 1d | finish no earlier than 2006-12-21 |
| 190 | 6.1.10 | Deploy to Production |  | 1d | 2007-07-27 | 2007-07-27 | 186, 158, 185 | 2006-12-19 | 2006-12-20 | 2d | 0d |  |
| 191 | 2.1.3.3 | Deliverable: Production System | milestone | 1d | 2007-07-30 | 2007-07-30 | 190 | 2006-12-21 | 2006-12-22 | 2d | 0d | start no earlier than 2005-04-08 |
